# MITO & Ticketsir-Sprint 30

Schedule from MS Project, 2025-11-15 to 2026-05-18, A marks actual dates.
QuantumPM

## Calendars

- Standard: Mon-Fri 08:00-12:00, 13:00-17:00; Sat-Sun off.

## Resources

| Resource |
| --- |
| Vakil |
| Rishabh |
| Monu |
| Jayant |
| Iyanu |
| Akshita |
| Mumtaz |
| Funmi |
| Robin |
| Sakshi |
| Amit |
| Sakshi2 |
| Vk |

## Schedule

| ID | WBS | Task | Type | Duration | Start | Finish | Predecessors | Complete | Remaining | Actual start | Total slack | Constraint | Resources | Work | Actual work |
| --- | --- | --- | --- | --- | --- | --- | --- | --- | --- | --- | --- | --- | --- | --- | --- |
| 2 | 1 | **TicketSir** |  | 10d? | 2026-02-19 | 2026-03-04 |  | 87% | 1.33d? | 2026-02-10 |  |  |  | 504h | 437.2h |
| 3 | 1.1 | TicketSir Bug Fixes |  | 1d? | 2026-02-13 | 2026-02-13 |  |  |  |  | 66d | finish no earlier than 2026-02-13 | Rishabh | 8h |  |
| 4 | 1.2 | 7998 – TicketSir (Pre sale & Waitlist Booking)-Mobile App |  | 1d? | 2026-02-24 A | 2026-02-24 A |  | 100% |  |  |  | finish no earlier than 2026-02-24 | Jayant | 8h | 8h |
| 5 | 1.3 | Label changes |  | 1d? | 2026-02-24 A | 2026-02-24 A |  | 100% |  |  |  | finish no earlier than 2026-02-24 | Jayant | 8h | 8h |
| 6 | 1.4 | 7839 – Biometric Login (TicketSir & Cokobar)-Mobile App |  | 31d? | 2026-02-10 A | 2026-03-24 |  | 95% | 1.55d? |  | 39d | finish no earlier than 2026-03-24 | Jayant | 248h | 235.6h |
| 7 | 1.5 | 7923 – DB Migration of TicketSir |  | 29d? | 2026-03-03 A | 2026-04-10 |  | 80% | 5.8d? |  | 26d | finish no earlier than 2026-04-10 | Rishabh | 232h | 185.6h |
| 9 | 2 | **Rhemito** |  | 10d? | 2026-02-19 | 2026-03-04 |  | 99% | 0.09d? | 2026-02-06 |  |  |  | 256h | 253.6h |
| 10 | 2.1 | **8058: Rhemito bug fixes** |  | 12d? | 2026-02-19 | 2026-03-06 A |  | 100% |  | 2026-02-06 |  |  |  | 128h | 128h |
| 11 | 2.1.1 | Backend | milestone | 0d? | 2026-02-06 A | 2026-02-06 A |  | 100% |  |  |  |  | Rishabh |  |  |
| 12 | 2.1.2 | Front end: Web |  | 8d? | 2026-02-19 A | 2026-03-02 A |  | 100% |  |  |  | finish no earlier than 2026-03-02 | Monu | 64h | 64h |
| 13 | 2.1.3 | Rhemito bug fixes: Mobile App |  | 8d? | 2026-02-25 A | 2026-03-06 A | 4, 5 | 100% |  |  |  | finish no earlier than 2026-03-06 | Jayant | 64h | 64h |
| 14 | 2.2 | **Notification** |  | 13d? | 2026-03-25 A | 2026-04-10 |  | 98% | 0.24d? |  | 26d |  |  | 128h | 125.6h |
| 15 | 2.2.1 | Backend |  | 1d? | 2026-04-10 A | 2026-04-10 |  | 70% | 0.3d? |  | 26d | finish no earlier than 2026-04-10 | Rishabh | 8h | 5.6h |
| 16 | 2.2.2 | Front end: web |  | 2d? | 2026-04-02 A | 2026-04-03 A |  | 100% |  |  |  | finish no earlier than 2026-04-03 | Monu | 16h | 16h |
| 17 | 2.2.3 | Mobile App |  | 13d? | 2026-03-25 A | 2026-04-10 A | 6 | 100% |  |  |  | finish no earlier than 2026-04-14 | Jayant | 104h | 104h |
| 18 | 3 | 7744 – Pay by Bank & Bank Transfer for New Customers |  | 1d? | 2026-02-19 | 2026-02-19 |  |  |  |  | 62d | start no earlier than 2026-02-19 | Vakil | 8h |  |
| 19 | 4 | Rhemito-MobileApp: Help Tickets |  | 12d? | 2026-03-26 A | 2026-04-10 A |  | 100% |  |  |  | finish no earlier than 2026-04-10 | Jayant | 96h | 96h |
| 20 | 5 | Mobile App: Manual Bank Transfer Flow |  | 4d? | 2026-04-15 | 2026-04-20 |  |  |  |  | 20d | finish no earlier than 2026-04-20 | Jayant | 32h |  |
| 22 | 6 | 8057: KYC Bug Fixes | manual | 1d | 2026-02-19 | 2026-02-19 |  |  |  |  |  |  | Vakil | 8h |  |
| 24 | 7 | **7986 – Affiliate Dashboard (OnePipe Integration)** |  | 0d? | 2026-02-11 | 2026-02-11 |  | 80% | 0d? | 2026-02-12 |  |  |  | 136h | 108.8h |
| 25 | 7.1 | Frontend: web |  | 1d? | 2026-02-12 | 2026-02-12 |  |  |  |  | 67d |  | Monu | 8h |  |
| 26 | 7.2 | Backend |  | 1d? | 2026-02-12 A | 2026-02-12 A |  | 100% |  |  |  |  | Sakshi | 8h | 8h |
| 27 | 7.3 | Design |  | 1d? | 2026-02-12 | 2026-02-12 |  |  |  |  | 67d |  | Iyanu | 8h |  |
| 28 | 7.4 | OnePipe Enhancement |  | 14d? | 2026-02-19 A | 2026-04-20 | 74 | 90% | 1.4d? |  | 20.6d | finish no earlier than 2026-03-10 | Vakil | 112h | 100.8h |

Notes:
- 3: ·Add gate close date time and age description on ticket PDF (ensure all basic items are on Web, App, and ticket).
- 4: * .; ; ·;; ⦁Counter shown even when user cannot use it / 1Paid wishlist and Notify Me options not shown / 2Inconsistent radio button selection / 3Amount rounding issue
- 6: Blocked as API is not deployed on LIVE working on Staging. / Will be done with DB Migration.
- 12: * .; ; ·;; ⦁App: Collection account and wallet balance data resetting to blank / 1App: Send money not picking currency from collection account or wallet / 2Bank Transfer: Account display should be on the last page and display time increased
- 18: * .; ; ·;; ⦁Card option not available for new customers / 1Implement Plaid: Pay within X mins → Instant / 2Show countdown / 3Copy Paystack for Bank Transfer
- 28: KYC to be done after 1st TXN / Session mgmt

| ID | WBS | Task | Duration | Start | Finish | Predecessors | Complete | Remaining | Actual start | Actual finish | Total slack | Free slack | Constraint | Resources | Work | Actual work |
| --- | --- | --- | --- | --- | --- | --- | --- | --- | --- | --- | --- | --- | --- | --- | --- | --- |
| 30 | 8 | **7996 – Role based Login on Mito Admin** | 9d? | 2026-02-19 A | 2026-03-03 |  | 100% |  |  | 2026-03-24 |  |  |  |  | 264h | 264h |
| 31 | 8.1 | Backend | 24d? | 2026-02-19 A | 2026-03-24 A |  | 100% |  |  |  |  |  | finish no earlier than 2026-03-24 | Sakshi | 192h | 192h |
| 32 | 8.2 | Frontend | 9d? | 2026-02-19 A | 2026-03-03 A |  | 100% |  |  |  |  |  | finish no earlier than 2026-03-03 | Monu | 72h | 72h |
| 34 | 9 | **OBO** | 17d? | 2026-02-19 A | 2026-03-13 |  | 75% | 4.33d? |  |  |  |  |  |  | 528h | 393.6h |
| 35 | 9.1 | Frontend | 42d? | 2026-02-19 A | 2026-04-17 |  | 60% | 16.8d? |  |  | 0d |  | finish no earlier than 2026-04-17 | Monu | 336h | 201.6h |
| 36 | 9.2 | Backend | 24d? | 2026-02-19 A | 2026-04-01 A |  | 100% |  |  |  |  |  | finish no earlier than 2026-04-01 | Rishabh | 192h | 192h |
| 38 | 10 | **Rate Manager** | 14d? | 2026-02-19 A | 2026-03-10 |  | 56% | 6.13d? |  |  |  |  |  |  | 387.2h | 217.6h |
| 39 | 10.1 | Frontend | 7.4d? | 2026-02-19 A | 2026-04-22 | 35 | 59% | 3d? |  |  | 18d |  | finish no earlier than 2026-04-22 | Monu | 59.2h | 35.2h |
| 40 | 10.2 | Backend-Config Setup | 6d? | 2026-03-09 A | 2026-03-16 A |  | 100% |  |  |  |  |  | finish no earlier than 2026-03-16 | Sakshi | 48h | 48h |
| 41 | 10.3 | Backend-Overrides | 6d? | 2026-03-17 A | 2026-03-24 A |  | 100% |  |  |  |  |  | finish no earlier than 2026-03-24 | Sakshi | 48h | 48h |
| 42 | 10.4 | Backend-Cross Rates | 18d? | 2026-03-25 A | 2026-04-17 |  | 60% | 7.2d? |  |  | 10d | 0d | finish no earlier than 2026-04-17 | Sakshi | 144h | 86.4h |
| 43 | 10.5 | Backend-Existing Affiliate Migration | 11d? | 2026-04-20 | 2026-05-04 | 42 |  |  |  |  | 10d |  | finish no earlier than 2026-04-28 | Sakshi | 88h |  |
| 45 | 11 | **Customer support portal** | 12d? | 2026-03-25 A | 2026-04-09 A |  | 100% |  |  |  |  |  |  |  | 128h | 128h |
| 46 | 11.1 | Front end | 12d? | 2026-03-25 A | 2026-04-09 A |  | 100% |  |  |  |  |  | finish no earlier than 2026-04-09 | Monu | 96h | 96h |
| 47 | 11.2 | Backend | 4d? | 2026-03-25 A | 2026-03-30 A |  | 100% |  |  |  |  |  | finish no earlier than 2026-03-30 | Rishabh | 32h | 32h |
| 49 | 12 | **Affiliate** | 10d? | 2026-02-19 | 2026-03-04 |  | 81% | 1.93d? | 2025-11-15 |  |  |  |  |  | 808h | 651.68h |
| 50 | 12.1 | AirPeace Payment Pages/V2 changes | 1d? | 2026-02-19 A | 2026-02-19 A |  | 100% |  |  |  |  |  |  | Vakil | 8h | 8h |
| 51 | 12.2 | Refund Enhancement | 34d? | 2026-04-01 A | 2026-05-18 |  | 99% | 0.34d? |  |  | 0d |  | finish no earlier than 2026-04-14 | Vakil | 272h | 269.28h |
| 52 | 12.3 | Account Switching: Business<->Individual | 2d? | 2026-02-25 | 2026-02-26 |  |  |  |  |  | 57d |  | finish no earlier than 2026-02-26 | Vakil | 16h |  |
| 53 | 12.4 | Interswitch-Payout | 37d? | 2025-11-15 A | 2026-02-24 |  | 90% | 3.7d? |  |  | 59.3d |  |  | Sakshi | 296h | 266.4h |
| 54 | 12.5 | Flex POC | 2d? | 2026-04-14 A | 2026-04-15 |  | 50% | 1d? |  |  | 0d |  | finish no earlier than 2026-04-15 | Monu | 16h | 8h |
| 55 | 12.6 | FLEX-Backend | 24d? | 2026-04-14 A | 2026-05-15 |  | 50% | 12d? |  |  | 1d |  | start no earlier than 2026-04-14 | Sakshi | 192h | 96h |
| 56 | 12.7 | Affiliate Coordination | 1d? | 2026-04-10 A | 2026-04-10 |  | 50% | 0.5d? |  |  | 26d |  | start no earlier than 2026-04-10 | Sakshi | 8h | 4h |
| 58 | 13 | **MITO-Admin** | 1d? | 2026-02-19 A | 2026-02-19 A |  | 100% |  |  |  |  |  |  |  | 8h | 8h |
| 59 | 13.1 | 7811 – Movement to Retail Submission: Bug Fixes | 1d? | 2026-02-19 A | 2026-02-19 A |  | 100% |  |  |  |  |  |  | Sakshi | 8h | 8h |

Notes:
- 46: Front-end
- 59: ·Transactions stuck with status In Progress. / ·Warning: Transaction resulted in a loss

| ID | WBS | Task | Duration | Start | Finish | Predecessors | Complete | Remaining | Total slack | Constraint | Resources | Work | Actual work |
| --- | --- | --- | --- | --- | --- | --- | --- | --- | --- | --- | --- | --- | --- |
| 62 | 14 | **Testing** | 10d? | 2026-02-19 A | 2026-03-04 |  | 79% | 2.13d? |  |  |  | 432h | 340h |
| 63 | 14.1 | 7925 – Interswitch | 11d? | 2026-03-20 A | 2026-04-03 |  | 60% | 4.4d? | 31d | finish no earlier than 2026-04-03 | Robin | 88h | 52.8h |
| 64 | 14.2 | 8002: (App) Ticketsir: booking for pre sale and waitlist app | 1d? | 2026-02-25 A | 2026-02-25 A |  | 100% |  |  | finish no earlier than 2026-02-25 | Robin | 8h | 8h |
| 65 | 14.3 | 8054: Date Caption changes | 1d? | 2026-02-26 | 2026-02-26 | 64 |  |  | 57d |  | Robin | 8h |  |
| 66 | 14.4 | Role based | 8d? | 2026-03-13 A | 2026-03-24 A |  | 100% |  |  | finish no earlier than 2026-03-24 | Robin | 64h | 64h |
| 67 | 14.5 | OBO | 1d? | 2026-03-18 A | 2026-04-14 |  | 50% | 0.5d? | 24d | finish no earlier than 2026-04-14 | Robin | 8h | 4h |
| 68 | 14.6 | Help Tickets Web | 5d? | 2026-04-03 A | 2026-04-09 A |  | 100% |  |  | finish no earlier than 2026-04-09 | Robin | 40h | 40h |
| 69 | 14.7 | Help Tickets App | 2d? | 2026-04-08 A | 2026-04-09 A |  | 100% |  |  | finish no earlier than 2026-04-09 | Robin | 16h | 16h |
| 70 | 14.8 | Ticketsir DB Migration | 24d? | 2026-03-13 A | 2026-04-15 |  | 80% | 4.8d? | 23d | finish no earlier than 2026-04-15 | Robin | 192h | 153.6h |
| 71 | 14.9 | Flex POC | 1d? | 2026-02-19 A | 2026-04-16 | 54 | 20% | 0.8d? | 22.2d |  | Robin | 8h | 1.6h |
| 73 | 15 | **Integrations** | 5d? | 2026-04-10 A | 2026-04-16 |  | 79% | 1.07d? | 0d |  |  | 56h | 44h |
| 74 | 15.1 | Plaid for Rhemito | 3d? | 2026-04-14 A | 2026-04-16 |  | 50% | 1.5d? | 0d | finish no earlier than 2026-04-16 | Vakil | 24h | 12h |
| 76 | 15.2 | Mobile App Platform and Environment Update | 4d? | 2026-04-10 A | 2026-04-15 A |  | 100% |  |  | finish no earlier than 2026-04-15 | Jayant | 32h | 32h |
